# Planificación del proyecto DPPI

How a schedule from MS Project changed from version to version. A marks actual dates.

## Version 1 (saved 2024-03-02, file DPPI24_E11-3_V01.mpp)

Note of the change: 22/09/2024 Subida de archivos

| ID | WBS | Task | Duration | Start | Finish | Predecessors | Complete | Total float |
| --- | --- | --- | --- | --- | --- | --- | --- | --- |
| 1 | 1 | **Documento UNE157801** | 5d | 2024-03-07 | 2024-04-30 |  |  | 0d |
| 2 | 1.1 | **Memoria** | 5d | 2024-03-07 | 2024-04-30 |  |  | 0d |
| 3 |  | Hojas de identificación | 0d | 2024-03-07 | 2024-03-07 | 48 |  | 5d |
| 4 |  | Introducción | 0d | 2024-03-18 | 2024-03-18 | 49 |  | 4d |
| 5 |  | Objeto | 0d | 2024-03-07 | 2024-03-07 | 50 |  | 5d |
| 6 |  | Antecedentes | 0d | 2024-03-18 | 2024-03-18 | 51 |  | 4d |
| 7 |  | Descripción de la situación actual | 0d | 2024-03-18 | 2024-03-18 | 52 |  | 4d |
| 8 |  | Normas y referencias | 0d | 2024-04-09 | 2024-04-09 | 53 |  | 2d |
| 9 |  | Definiciones y abreviaturas | 0d | 2024-03-18 | 2024-03-18 | 58 |  | 4d |
| 10 |  | Requisitos iniciales | 0d | 2024-04-30 | 2024-04-30 | 61 |  | 0d |
| 11 |  | Alcance | 0d | 2024-03-18 | 2024-03-18 | 62 |  | 4d |
| 12 |  | Hipótesis y restricciones | 0d | 2024-03-18 | 2024-03-18 | 65 |  | 4d |
| 13 |  | Estudio de alternativas y viabilidad | 0d | 2024-03-28 | 2024-03-28 | 68 |  | 3d |
| 14 |  | Descripción de la solución propuesta | 0d | 2024-03-07 | 2024-03-07 | 72 |  | 5d |
| 15 |  | Análisis de Riesgos | 0d | 2024-03-28 | 2024-03-28 | 73 |  | 3d |
| 16 | 1.1.14 | **Organización y gestión del proyecto** | 0d | 2024-03-07 | 2024-03-07 | 77 |  | 5d |
| 17 |  | Planificación temporal | 0d | 2024-03-07 | 2024-03-07 | 78 |  | 5d |
| 18 |  | WBS | 0d | 2024-03-07 | 2024-03-07 | 79 |  | 5d |
| 19 |  | Precedencias y estimación de esfuerzos | 0d | 2024-03-18 | 2024-03-18 | 80 |  | 4d |
| 20 |  | Resumen del Presupuesto | 0d | 2024-03-07 | 2024-03-07 | 83 |  | 5d |
| 21 |  | Orden de prioridad de los documentos básicos del proyecto. | 0d | 2024-03-07 | 2024-03-07 | 84 |  | 5d |
| 22 | 1.2 | **Anexos** | 0d | 2024-03-18 | 2024-03-18 | 85 |  | 4d |
| 23 |  | Documentación de entrada | 0d | 2024-03-18 | 2024-03-18 | 86 |  | 4d |
| 24 |  | Análisis y Diseño del sistema | 0d | 2024-03-18 | 2024-03-18 | 89 |  | 4d |
| 25 |  | Estimación de tamaño y esfuerzos | 0d | 2024-03-18 | 2024-03-18 | 93 |  | 4d |
| 26 | 1.2.4 | **Planes de gestion del proyecto** | 0d | 2024-03-18 | 2024-03-18 | 97 |  | 4d |
| 27 |  | Gestión de la integración | 0d | 2024-03-18 | 2024-03-18 | 98 |  | 4d |
| 28 |  | Gestión del alcance | 0d | 2024-03-18 | 2024-03-18 | 101 |  | 4d |
| 29 |  | Gestión de plazos | 0d | 2024-03-18 | 2024-03-18 | 105 |  | 4d |
| 30 |  | Gestión de costes | 0d | 2024-03-18 | 2024-03-18 | 109 |  | 4d |
| 31 |  | Gestión de la calidad | 0d | 2024-03-18 | 2024-03-18 | 113 |  | 4d |
| 32 |  | Gestion de recursos humanos | 0d | 2024-03-18 | 2024-03-18 | 117 |  | 4d |
| 33 |  | Gestión de comunicaciones | 0d | 2024-03-18 | 2024-03-18 | 121 |  | 4d |
| 34 |  | Gestión de riesgos | 0d | 2024-03-18 | 2024-03-18 | 125 |  | 4d |
| 35 |  | Gestión de adquisiciones | 0d | 2024-03-18 | 2024-03-18 | 129 |  | 4d |
| 36 |  | Plan de seguridad | 0d | 2024-03-18 | 2024-03-18 | 133 |  | 4d |
| 37 |  | Otros anexos | 0d | 2024-03-18 | 2024-03-18 | 136 |  | 4d |
| 38 |  | Espeficifaciones del sistema | 0d | 2024-03-07 | 2024-03-07 | 137 |  | 5d |
| 39 |  | Presupuesto | 0d | 2024-03-07 | 2024-03-07 | 138 |  | 5d |
| 40 |  | Estudios con entidad propia | 0d | 2024-03-07 | 2024-03-07 | 139 |  | 5d |
| 41 | 2 | **Tareas a realizar para el proyecto de laboratorio de DPPI** | 6d? | 2024-02-26 A | 2024-04-30 |  | 5% | 0d |
| 42 |  | Creación de carpeta compartida | 0d | 2024-02-26 A | 2024-02-26 A |  | 100% |  |
| 43 | 2.2 | **Creación de una Wiki** | 1.1d | 2024-02-26 A | 2024-03-08 |  | 50% | 4.9d |
| 44 |  | Creación de una versión básica | 1d | 2024-02-26 A | 2024-02-26 A |  | 100% |  |
| 45 |  | Poner más páginas e información en la wiki | 1d | 2024-02-27 | 2024-03-08 | 44 |  | 4.9d |
| 46 |  | Creación de plantilla de word | 3d | 2024-02-26 A | 2024-02-28 A |  | 100% |  |
| 47 | 2.4 | **Redacción de la Memoria** | 6d? | 2024-02-26 | 2024-04-30 |  |  | 0d |
| 48 |  | Redacción de Hojas de identificación | 1d | 2024-02-26 | 2024-03-07 |  |  | 5d |
| 49 |  | Redacción de Introducción | 2d | 2024-02-26 | 2024-03-18 |  |  | 4d |
| 50 |  | Redacción de Objeto | 1d | 2024-02-26 | 2024-03-07 |  |  | 5d |
| 51 |  | Redacción de Antecedentes | 2d | 2024-02-26 | 2024-03-18 |  |  | 4d |
| 52 |  | Redacción de Descripción de la situación actual | 2d | 2024-02-26 | 2024-03-18 |  |  | 4d |
| 53 | 2.4.6 | **Redacción de Normas y referencias** | 4d? | 2024-02-26 | 2024-04-09 |  |  | 2d |
| 54 | 2.4.6.1 | **Redacción de Disposiciones legales y normas aplicadas** | 2d? | 2024-02-26 | 2024-03-18 |  |  | 4d |
| 55 |  | Recopilación del conjunto de disposiciones y normas aplicables al proyecto | 1d? | 2024-02-26 | 2024-03-07 |  |  | 4d |
| 56 |  | Inclusión de las normas en el documento | 1d? | 2024-03-07 | 2024-03-18 | 55 |  | 4d |
| 57 |  | Redacción de Bibliografía | 4d | 2024-02-26 | 2024-04-09 |  |  | 2d |
| 58 | 2.4.7 | **Redacción de Definiciones y abreviaturas** | 2d? | 2024-02-26 | 2024-03-18 |  |  | 4d |
| 59 |  | Recopilación de las definiciones y abreviaturas utilizadas en el proyecto | 1d? | 2024-02-26 | 2024-03-07 |  |  | 4d |
| 60 |  | Documentación de las definiciones y abrevieturas | 1d? | 2024-03-07 | 2024-03-18 | 59 |  | 4d |
| 61 |  | Identificación y redacción de los requisitos iniciales | 6d | 2024-02-26 | 2024-04-30 |  |  | 0d |
| 62 | 2.4.9 | **Redacción de Alcance** | 2d? | 2024-02-26 | 2024-03-18 |  |  | 4d |
| 63 |  | Enumeración y contenido de todos los entregables del proyecto | 1d? | 2024-02-26 | 2024-03-07 |  |  | 4d |
| 64 |  | Documentación del alcance | 1d? | 2024-03-07 | 2024-03-18 | 63 |  | 4d |
| 65 | 2.4.10 | **Redacción de Hipótesis y restricciones** | 2d? | 2024-02-26 | 2024-03-18 |  |  | 4d |
| 66 |  | Identificación de las hipotesís y las restricciones | 1d? | 2024-02-26 | 2024-03-07 |  |  | 4d |
| 67 |  | Documentación de las hipótesis y restricciones | 1d? | 2024-03-07 | 2024-03-18 | 66 |  | 4d |
| 68 | 2.4.11 | **Redacción de Estudio de alternativas y viabilidad** | 3d? | 2024-02-26 | 2024-03-28 |  |  | 3d |
| 69 |  | Realización de estudios de alternativas | 1d? | 2024-02-26 | 2024-03-07 |  |  | 3d |
| 70 |  | Evaluación de la viabilidad de las alternativas | 1d? | 2024-03-07 | 2024-03-18 | 69 |  | 3d |

| ID | WBS | Task | Duration | Start | Finish | Predecessors | Total float |
| --- | --- | --- | --- | --- | --- | --- | --- |
| 71 |  | Documentación de los resultados del estudio y la viabilidad | 1d? | 2024-03-18 | 2024-03-28 | 70 | 3d |
| 72 |  | Descripción de la solución propuesta y sus características | 1d? | 2024-02-26 | 2024-03-07 |  | 5d |
| 73 | 2.4.13 | **Redacción de Análisis de Riesgos** | 3d? | 2024-02-26 | 2024-03-28 |  | 3d |
| 74 |  | Identificación de riesgos | 1d? | 2024-02-26 | 2024-03-07 |  | 3d |
| 75 |  | Evaluación de impacto y acciones de mitigación | 1d? | 2024-03-07 | 2024-03-18 | 74 | 3d |
| 76 |  | Documentación y descripción de las conclusiones obtenidas | 1d? | 2024-03-18 | 2024-03-28 | 75 | 3d |
| 77 | 2.4.14 | **Redacción de Organización y gestión del proyecto** | 1d? | 2024-02-26 | 2024-03-07 |  | 5d |
| 78 |  | Creación de cronogramas incluyendo entregas parciales, hitos intermedios y duración del proyecto | 1d? | 2024-02-26 | 2024-03-07 |  | 5d |
| 79 |  | Redacción de WBS | 1d? | 2024-02-26 | 2024-03-07 |  | 5d |
| 80 | 2.4.15 | **Redacción de Precedencias y estimación de esfuerzos** | 2d? | 2024-02-26 | 2024-03-18 |  | 4d |
| 81 |  | Establecimiento de las relaciones de precedencia | 1d? | 2024-02-26 | 2024-03-07 |  | 4d |
| 82 |  | Estimación de esfuerzos y recursos necesarios | 1d? | 2024-03-07 | 2024-03-18 | 81 | 4d |
| 83 |  | Redacción de Resumen del Presupuesto | 1d? | 2024-02-26 | 2024-03-07 |  | 5d |
| 84 |  | Redacción de Orden de prioridad de los documentos básicos del proyecto. | 1d? | 2024-02-26 | 2024-03-07 |  | 5d |
| 85 | 2.5 | **Redacción de Anexos** | 2d? | 2024-02-26 | 2024-03-18 |  | 4d |
| 86 | 2.5.1 | **Redacción de Documentación de entrada** | 2d? | 2024-02-26 | 2024-03-18 |  | 4d |
| 87 |  | Recopilación y organización de documentos adicionales relevantes | 1d? | 2024-02-26 | 2024-03-07 |  | 4d |
| 88 |  | Revisión y actualización de los anexos según sea necesario | 1d? | 2024-03-07 | 2024-03-18 | 87 | 4d |
| 89 | 2.5.2 | **Redacción de Análisis y Diseño del sistema** | 1d? | 2024-02-26 | 2024-03-07 |  | 5d |
| 90 |  | Realización de análisis detallado de los requerimientos del sistema | 1d? | 2024-02-26 | 2024-03-07 |  | 5d |
| 91 |  | Diseño de la arquitectura y componentes del sistema | 1d? | 2024-02-26 | 2024-03-07 |  | 5d |
| 92 |  | Revisión y validación del análisis y diseño del sistema | 1d? | 2024-02-26 | 2024-03-07 |  | 5d |
| 93 | 2.5.3 | **Redacción de Estimación de tamaño y esfuerzos** | 1d? | 2024-02-26 | 2024-03-07 |  | 5d |
| 94 |  | Determinación del tamaño del proyecto en términos de líneas de código y funcionalidades | 1d? | 2024-02-26 | 2024-03-07 |  | 5d |
| 95 |  | Estimación de los esfuerzos necesarios para completar el proyecto | 1d? | 2024-02-26 | 2024-03-07 |  | 5d |
| 96 |  | Revisión y ajuste de las estimaciones según sea necesario | 1d? | 2024-02-26 | 2024-03-07 |  | 5d |
| 97 | 2.5.4 | **Redacción de Planes de gestion del proyecto** | 1d? | 2024-02-26 | 2024-03-07 |  | 5d |
| 98 | 2.5.4.1 | **Redacción de Gestión de la integración** | 1d? | 2024-02-26 | 2024-03-07 |  | 5d |
| 99 |  | Coordinación de todos los elementos del proyecto para garantizar su integración adecuada | 1d? | 2024-02-26 | 2024-03-07 |  | 5d |
| 100 |  | Seguimiento y control de las interfaces entre diferentes componentes del proyecto | 1d? | 2024-02-26 | 2024-03-07 |  | 5d |
| 101 | 2.5.4.2 | **Redacción de Gestión del alcance** | 1d? | 2024-02-26 | 2024-03-07 |  | 5d |
| 102 |  | Definición y control del alcance del proyecto | 1d? | 2024-02-26 | 2024-03-07 |  | 5d |
| 103 |  | Gestión de cambios en el alcance del proyecto | 1d? | 2024-02-26 | 2024-03-07 |  | 5d |
| 104 |  | Aseguramiento de que el proyecto cumple con los requisitos establecidos | 1d? | 2024-02-26 | 2024-03-07 |  | 5d |
| 105 | 2.5.4.3 | **Redacción de Gestión de plazos** | 1d? | 2024-02-26 | 2024-03-07 |  | 5d |
| 106 |  | Planificación y programación de actividades del proyecto | 1d? | 2024-02-26 | 2024-03-07 |  | 5d |
| 107 |  | Seguimiento del avance del proyecto y ajuste de la programación según sea necesario | 1d? | 2024-02-26 | 2024-03-07 |  | 5d |
| 108 |  | Identificación y gestión de posibles desviaciones en los plazos | 1d? | 2024-02-26 | 2024-03-07 |  | 5d |
| 109 | 2.5.4.4 | **Redacción de Gestión de costes** | 1d? | 2024-02-26 | 2024-03-07 |  | 5d |
| 110 |  | Estimación y seguimiento de los costos del proyecto | 1d? | 2024-02-26 | 2024-03-07 |  | 5d |
| 111 |  | Control del presupuesto asignado al proyecto | 1d? | 2024-02-26 | 2024-03-07 |  | 5d |
| 112 |  | Identificación y gestión de posibles desviaciones en los costos | 1d? | 2024-02-26 | 2024-03-07 |  | 5d |
| 113 | 2.5.4.5 | **Redacción de Gestión de la calidad** | 1d? | 2024-02-26 | 2024-03-07 |  | 5d |
| 114 |  | Establecimiento de estándares de calidad para el proyecto | 1d? | 2024-02-26 | 2024-03-07 |  | 5d |
| 115 |  | Implementación de procesos y controles de calidad | 1d? | 2024-02-26 | 2024-03-07 |  | 5d |
| 116 |  | Realización de auditorías de calidad y acciones correctivas según sea necesario | 1d? | 2024-02-26 | 2024-03-07 |  | 5d |
| 117 | 2.5.4.6 | **Redacción de Gestion de recursos humanos** | 1d? | 2024-02-26 | 2024-03-07 |  | 5d |
| 118 |  | Selección y asignación de recursos humanos para el proyecto | 1d? | 2024-02-26 | 2024-03-07 |  | 5d |
| 119 |  | Gestión del rendimiento y desarrollo del equipo | 1d? | 2024-02-26 | 2024-03-07 |  | 5d |
| 120 |  | Resolución de conflictos y motivación del equipo | 1d? | 2024-02-26 | 2024-03-07 |  | 5d |
| 121 | 2.5.4.7 | **Redacción de Gestión de comunicaciones** | 1d? | 2024-02-26 | 2024-03-07 |  | 5d |
| 122 |  | Desarrollo de planes de comunicación para el proyecto | 1d? | 2024-02-26 | 2024-03-07 |  | 5d |
| 123 |  | Establecimiento de canales de comunicación efectivos | 1d? | 2024-02-26 | 2024-03-07 |  | 5d |
| 124 |  | Distribución de información relevante a todas las partes interesadas | 1d? | 2024-02-26 | 2024-03-07 |  | 5d |
| 125 | 2.5.4.8 | **Redacción de Gestión de riesgos** | 1d? | 2024-02-26 | 2024-03-07 |  | 5d |
| 126 |  | Identificación, evaluación y priorización de riesgos | 1d? | 2024-02-26 | 2024-03-07 |  | 5d |
| 127 |  | Desarrollo de estrategias de mitigación y contingencia | 1d? | 2024-02-26 | 2024-03-07 |  | 5d |
| 128 |  | Monitoreo y revisión continua de los riesgos durante todo el proyecto | 1d? | 2024-02-26 | 2024-03-07 |  | 5d |
| 129 | 2.5.4.9 | **Redacción de Gestión de adquisiciones** | 1d? | 2024-02-26 | 2024-03-07 |  | 5d |
| 130 |  | Identificación de necesidades de adquisición de productos o servicios externos | 1d? | 2024-02-26 | 2024-03-07 |  | 5d |
| 131 |  | Desarrollo de estrategias de adquisición | 1d? | 2024-02-26 | 2024-03-07 |  | 5d |
| 132 |  | Selección y gestión de proveedores | 1d? | 2024-02-26 | 2024-03-07 |  | 5d |
| 133 | 2.5.5 | **Redacción de Plan de seguridad** | 1d? | 2024-02-26 | 2024-03-07 |  | 5d |
| 134 |  | Desarrollo de políticas y procedimientos de seguridad para el proyecto | 1d? | 2024-02-26 | 2024-03-07 |  | 5d |
| 135 |  | Implementación de controles de seguridad para proteger la información y los recursos del proyecto | 1d? | 2024-02-26 | 2024-03-07 |  | 5d |
| 136 |  | Redacción de Otros anexos | 1d? | 2024-02-26 | 2024-03-07 |  | 5d |
| 137 |  | Redacción de Especificaciones de los requisitos del producto | 1d? | 2024-02-26 | 2024-03-07 |  | 5d |
| 138 |  | Redacción de Presupuesto | 1d? | 2024-02-26 | 2024-03-07 |  | 5d |
| 139 |  | Redacción de Estudios con entidad propia | 1d? | 2024-02-26 | 2024-03-07 |  | 5d |

## Version 2 (saved 2024-04-08, file DPPI24_E11-3_V06.mpp)

Note of the change: 22/09/2024 Subida de archivos

Last finish 2024-04-30 → 2024-05-16 (+16d). Complete tasks 3 → 57.

Added:

| ID | Task | Duration | Start | Finish | Predecessors | Constraint | Resources |
| --- | --- | --- | --- | --- | --- | --- | --- |
| 1 | **Hitos** | 59.25d | 2024-02-27 A | 2024-05-16 |  |  |  |
| 15 | Análisis de riesgos | 0d | 2024-04-28 | 2024-04-28 | 75 |  |  |
| 16 | Organización y gestión del proyecto | 0d | 2024-03-14 | 2024-03-14 | 79 |  |  |
| 20 | Resumen del presupuesto | 0d | 2024-04-16 | 2024-04-16 | 85 |  |  |
| 21 | Orden de prioridad de los documentos básicos del proyecto | 0d | 2024-04-09 | 2024-04-09 | 86 |  |  |
| 25 | Estimación de tamaños y esfuerzos | 0d | 2024-03-19 A | 2024-03-19 A | 95 |  |  |
| 26 | **Planes de gesión del proyecto** | 50.06d | 2024-03-01 | 2024-05-07 |  |  |  |
| 31 | Gestion de la calidad | 0d | 2024-03-10 | 2024-03-10 | 112 |  |  |
| 32 | Gestión de recursos humanos | 0d | 2024-03-18 | 2024-03-18 | 113 |  |  |
| 38 | Especificaciones del sistema | 0d | 2024-03-27 | 2024-03-27 | 119 |  |  |
| 45 | **Poner más páginas e información en la wiki** | 17.25d | 2024-03-06 A | 2024-03-28 A |  |  | Omar |
| 46 | Modificación del indice de la WIKI | 0.12d | 2024-03-06 A | 2024-03-06 A |  |  | Omar |
| 47 | Añadir las actas realizadas | 0.12d | 2024-03-27 A | 2024-03-28 A |  | start no earlier than 2024-03-27 | Omar |
| 96 | **Estimación de los modulos** | 4d | 2024-03-05 A | 2024-03-09 A |  |  |  |
| 97 | Estimación modulo 1 | 1.12d | 2024-03-05 A | 2024-03-06 A |  |  | Mercurio |
| 98 | Estimación modulo 2 | 0.25d | 2024-03-07 A | 2024-03-09 A | 97 |  | Mercurio |
| 99 | Estimación modulo 3 | 1.12d | 2024-03-05 A | 2024-03-06 A |  |  | Pablo |
| 100 | Estimación modulo 4 | 1.12d | 2024-03-05 A | 2024-03-06 A |  |  | Omar |
| 101 | Estimación modulo 5 | 0.25d | 2024-03-07 A | 2024-03-09 A | 100 |  | Omar |
| 102 | Estimación modulo 6 | 0.25d | 2024-03-07 A | 2024-03-09 A | 99 |  | Pablo |
| 103 | Estimación modulo 7 | 1.12d | 2024-03-05 A | 2024-03-06 A |  |  | David |
| 104 | Calculo general de las estimaciones | 1.25d | 2024-03-10 | 2024-03-19 | 96 |  | Pablo |
| 105 | Inclusión de la explicación de los PF | 1d | 2024-04-05 A | 2024-04-10 A |  |  | Omar |
| 106 | Inclusión de la estimación de esfuerzos de los módulos | 1d | 2024-04-06 A | 2024-04-06 |  |  | Mercurio |
| 108 | Redacción de Gestión de la integración | 0.25d | 2024-04-07 A | 2024-04-08 A |  | start no earlier than 2024-04-07 | Omar |
| 109 | Redacción de Gestión del alcance | 0.12d | 2024-04-07 A | 2024-04-07 A |  |  | David |
| 110 | Redacción de Gestión de plazos | 0.25d | 2024-02-26 | 2024-03-02 |  |  | Mercurio |
| 122 | Legislacion sobre seguridad y proteccion de datos | 0.25d | 2024-04-06 A | 2024-04-08 A |  | start no earlier than 2024-04-06 | Pablo |
| 123 | Legislacion sobre propiedad intelectual e industrial | 0.12d | 2024-04-06 A | 2024-04-07 A |  | start no earlier than 2024-04-06 | Omar |
| 124 | Prevencion de riesgos laborales | 0.12d | 2024-04-07 A | 2024-04-10 A |  |  | David |
| 125 | Impacto ambiental | 0.12d | 2024-02-29 | 2024-03-02 |  |  | Mercurio |

Removed: 1 Documento UNE157801; 16 Organización y gestión del proyecto; 17 Planificación temporal; 20 Resumen del Presupuesto; 21 Orden de prioridad de los documentos básicos del proyecto.; 25 Estimación de tamaño y esfuerzos; 26 Planes de gestion del proyecto; 31 Gestión de la calidad; 32 Gestion de recursos humanos; 38 Espeficifaciones del sistema; 45 Poner más páginas e información en la wiki; 80 Redacción de Precedencias y estimación de esfuerzos; 95 Estimación de los esfuerzos necesarios para completar el proyecto; 96 Revisión y ajuste de las estimaciones según sea necesario; 98 Redacción de Gestión de la integración; 99 Coordinación de todos los elementos del proyecto para garantizar su integración adecuada; 101 Redacción de Gestión del alcance; 102 Definición y control del alcance del proyecto; 103 Gestión de cambios en el alcance del proyecto; 104 Aseguramiento de que el proyecto cumple con los requisitos establecidos; 105 Redacción de Gestión de plazos; 107 Seguimiento del avance del proyecto y ajuste de la programación según sea necesario; 108 Identificación y gestión de posibles desviaciones en los plazos; 109 Redacción de Gestión de costes; 110 Estimación y seguimiento de los costos del proyecto; 112 Identificación y gestión de posibles desviaciones en los costos; 113 Redacción de Gestión de la calidad; 114 Establecimiento de estándares de calidad para el proyecto; 115 Implementación de procesos y controles de calidad; 117 Redacción de Gestion de recursos humanos; 118 Selección y asignación de recursos humanos para el proyecto; 119 Gestión del rendimiento y desarrollo del equipo; 120 Resolución de conflictos y motivación del equipo; 121 Redacción de Gestión de comunicaciones; 123 Establecimiento de canales de comunicación efectivos; 124 Distribución de información relevante a todas las partes interesadas; 126 Identificación, evaluación y priorización de riesgos; 128 Monitoreo y revisión continua de los riesgos durante todo el proyecto; 129 Redacción de Gestión de adquisiciones; 130 Identificación de necesidades de adquisición de productos o servicios externos; 131 Desarrollo de estrategias de adquisición; 132 Selección y gestión de proveedores; 133 Redacción de Plan de seguridad; 134 Desarrollo de políticas y procedimientos de seguridad para el proyecto; 139 Redacción de Estudios con entidad propia

Changed:

| ID | Task | Start | Finish | Duration | Complete | Total float | Predecessors | Other |
| --- | --- | --- | --- | --- | --- | --- | --- | --- |
| 2 | **Memoria** | 2024-03-07 → 2024-02-27 A (-9d) | 2024-04-30 → 2024-05-16 (+16d) | 5d → 59.25d |  |  |  | baseline start 2024-03-07 → none; baseline finish 2024-04-30 → none |
| 3 | Hojas de identificación | 2024-03-07 → 2024-02-27 A (-9d) | 2024-03-07 → 2024-02-27 A (-9d) |  | 0% → 100% | 5d → none |  | baseline start 2024-03-07 → none; baseline finish 2024-03-07 → none |
| 4 | Introducción | 2024-03-18 → 2024-03-27 A (+9d) | 2024-03-18 → 2024-03-27 A (+9d) |  | 0% → 100% | 4d → none |  | baseline start 2024-03-18 → none; baseline finish 2024-03-18 → none |
| 5 | Objeto | 2024-03-07 → 2024-03-18 A (+11d) | 2024-03-07 → 2024-03-18 A (+11d) |  | 0% → 100% | 5d → none |  | baseline start 2024-03-07 → none; baseline finish 2024-03-07 → none |
| 6 | Antecedentes | 2024-03-18 → 2024-04-06 A (+19d) | 2024-03-18 → 2024-04-06 A (+19d) |  | 0% → 100% | 4d → none |  | baseline start 2024-03-18 → none; baseline finish 2024-03-18 → none |
| 7 | Descripción de la situación actual | 2024-03-18 → 2024-03-16 A (-2d) | 2024-03-18 → 2024-03-16 A (-2d) |  | 0% → 100% | 4d → none |  | baseline start 2024-03-18 → none; baseline finish 2024-03-18 → none |
| 8 | Normas y referencias | 2024-04-09 → 2024-05-06 (+27d) | 2024-04-09 → 2024-05-06 (+27d) |  |  | 2d → 8d |  | baseline start 2024-04-09 → none; baseline finish 2024-04-09 → none |
| 9 | Definiciones y abreviaturas | 2024-03-18 → 2024-05-16 (+59d) | 2024-03-18 → 2024-05-16 (+59d) |  |  | 4d → 0d |  | baseline start 2024-03-18 → none; baseline finish 2024-03-18 → none |
| 10 | Requisitos iniciales | 2024-04-30 → 2024-04-15 (-15d) | 2024-04-30 → 2024-04-15 (-15d) |  |  | 0d → 23d |  | baseline start 2024-04-30 → none; baseline finish 2024-04-30 → none |
| 11 | Alcance | 2024-03-18 → 2024-04-07 A (+20d) | 2024-03-18 → 2024-04-07 A (+20d) |  | 0% → 100% | 4d → none |  | baseline start 2024-03-18 → none; baseline finish 2024-03-18 → none |
| 12 | Hipótesis y restricciones | 2024-03-18 → 2024-05-01 (+44d) | 2024-03-18 → 2024-05-01 (+44d) |  |  | 4d → 11d |  | baseline start 2024-03-18 → none; baseline finish 2024-03-18 → none |
| 13 | Estudio de alternativas y viabilidad | 2024-03-28 → 2024-04-07 (+10d) | 2024-03-28 → 2024-04-07 (+10d) |  |  | 3d → 29d |  | baseline start 2024-03-28 → none; baseline finish 2024-03-28 → none |
| 14 | Descripción de la solución propuesta | 2024-03-07 → 2024-03-11 A (+4d) | 2024-03-07 → 2024-03-11 A (+4d) |  | 0% → 100% | 5d → none |  | baseline start 2024-03-07 → none; baseline finish 2024-03-07 → none |
| 17 | **Planificación temporal** | 2024-03-28 → 2024-03-12 A (-16d) | 2024-03-28 → 2024-03-27 (-1d) | 0d → 11.25d |  | 3d → 38d | 75 → none | was named Análisis de Riesgos; baseline start 2024-03-28 → none; baseline finish 2024-03-28 → none |
| 18 | WBS | 2024-03-07 → 2024-03-12 A (+5d) | 2024-03-07 → 2024-03-12 (+5d) |  | 0% → 50% | 5d → 49.25d |  | baseline start 2024-03-07 → none; baseline finish 2024-03-07 → none |
| 19 | Precedencias y estimación de esfuerzos | 2024-03-18 → 2024-03-27 A (+9d) | 2024-03-18 → 2024-03-27 A (+9d) |  | 0% → 100% | 4d → none | Redacción de Precedencias y estimación de esfuerzos → 83, 84 | baseline start 2024-03-18 → none; baseline finish 2024-03-18 → none |
| 22 | **Anexos** | 2024-03-18 → 2024-03-01 A (-17d) | 2024-03-18 → 2024-05-15 (+58d) | 0d → 56.06d |  | 4d → 1d | 87 → none | baseline start 2024-03-18 → none; baseline finish 2024-03-18 → none |
| 23 | Documentación de entrada | 2024-03-18 → 2024-04-08 (+21d) | 2024-03-18 → 2024-04-08 (+21d) |  |  | 4d → 28d |  | baseline start 2024-03-18 → none; baseline finish 2024-03-18 → none |
| 24 | Análisis y Diseño del sistema | 2024-03-18 → 2024-05-15 (+58d) | 2024-03-18 → 2024-05-15 (+58d) |  |  | 4d → 1d |  | baseline start 2024-03-18 → none; baseline finish 2024-03-18 → none |
| 27 | Gestión de la integración | 2024-03-18 → 2024-04-08 (+21d) | 2024-03-18 → 2024-04-08 (+21d) |  |  | 4d → 28d | Redacción de Gestión de la integración → 108 | baseline start 2024-03-18 → none; baseline finish 2024-03-18 → none |
| 28 | Gestión del alcance | 2024-03-18 → 2024-04-07 (+20d) | 2024-03-18 → 2024-04-07 (+20d) |  |  | 4d → 29d | Redacción de Gestión del alcance → 109 | baseline start 2024-03-18 → none; baseline finish 2024-03-18 → none |
| 29 | Gestión de plazos | 2024-03-18 → 2024-03-02 (-16d) | 2024-03-18 → 2024-03-02 (-16d) |  |  | 4d → 56.25d | Redacción de Gestión de plazos → 110 | baseline start 2024-03-18 → none; baseline finish 2024-03-18 → none |
| 30 | Gestión de costes | 2024-03-18 → 2024-05-07 (+50d) | 2024-03-18 → 2024-05-07 (+50d) |  |  | 4d → 7d | Redacción de Gestión de costes → 111 | baseline start 2024-03-18 → none; baseline finish 2024-03-18 → none |
| 33 | Gestión de comunicaciones | 2024-03-18 → 2024-03-01 (-17d) | 2024-03-18 → 2024-03-01 (-17d) |  |  | 4d → 57.06d | Redacción de Gestión de comunicaciones → 114 | baseline start 2024-03-18 → none; baseline finish 2024-03-18 → none |
| 34 | Gestión de riesgos | 2024-03-18 → 2024-04-06 (+19d) | 2024-03-18 → 2024-04-06 (+19d) |  |  | 4d → 30d | 81 → 115 | baseline start 2024-03-18 → none; baseline finish 2024-03-18 → none |
| 35 | Gestión de adquisiciones | 2024-03-18 → 2024-04-09 (+22d) | 2024-03-18 → 2024-04-09 (+22d) |  |  | 4d → 27.04d | Redacción de Gestión de adquisiciones → 116 | baseline start 2024-03-18 → none; baseline finish 2024-03-18 → none |
| 36 | Plan de seguridad | 2024-03-18 → 2024-04-06 (+19d) | 2024-03-18 → 2024-04-06 (+19d) |  |  | 4d → 30d | Redacción de Plan de seguridad → 117 | baseline start 2024-03-18 → none; baseline finish 2024-03-18 → none |
| 37 | Otros anexos | 2024-03-18 → 2024-04-14 (+27d) | 2024-03-18 → 2024-04-14 (+27d) |  |  | 4d → 23.25d |  | baseline start 2024-03-18 → none; baseline finish 2024-03-18 → none |
| 39 | Presupuesto | 2024-03-07 → 2024-04-06 (+30d) | 2024-03-07 → 2024-04-06 (+30d) |  |  | 5d → 29.81d |  | baseline start 2024-03-07 → none; baseline finish 2024-03-07 → none |
| 40 | Estudios con entidad propia | 2024-03-07 → 2024-04-10 (+34d) | 2024-03-07 → 2024-04-10 (+34d) |  |  | 5d → 26d | Redacción de Estudios con entidad propia → 121 | baseline start 2024-03-07 → none; baseline finish 2024-03-07 → none |
| 41 | **Tareas a realizar para el proyecto de laboratorio de DPPI** |  | 2024-04-30 → 2024-05-16 (+16d) | 6d? → 61.25d | 5% → 83% |  |  | baseline start 2024-02-26 → none; baseline finish 2024-04-30 → none |
| 42 | Creación de carpeta compartida |  |  | 0d → 0.03d |  |  |  | resources David; Mercurio; Omar; Pablo → David; Omar; Mercurio; Pablo; baseline start 2024-02-26 → none; baseline finish 2024-02-26 → none |
| 43 | **Creación de una Wiki** |  | 2024-03-08 → 2024-03-28 A (+20d) | 1.1d → 24.25d | 50% → 100% | 4.9d → none |  | baseline start 2024-02-26 → none; baseline finish 2024-03-08 → none |
| 44 | Creación de una versión básica |  |  | 1d → 0.06d |  |  |  | baseline start 2024-02-26 → none; baseline finish 2024-02-26 → none |
| 48 | Creación de plantilla de word |  | 2024-02-28 A → 2024-02-27 A (-1d) | 3d → 1.12d |  |  |  | baseline start 2024-02-26 → none; baseline finish 2024-02-28 → none |
| 49 | **Redacción de la Memoria** | 2024-02-26 A | 2024-04-30 → 2024-05-16 (+16d) | 6d? → 61.09d | 0% → 88% |  |  | baseline start 2024-02-26 → none; baseline finish 2024-04-30 → none |
| 50 | Redacción de Hojas de identificación | 2024-02-26 → 2024-02-27 A (+1d) | 2024-03-07 → 2024-02-27 A (-9d) |  | 0% → 100% | 5d → none |  | resources David → Omar; baseline start 2024-02-26 → none; baseline finish 2024-03-07 → none |
| 51 | Redacción de Introducción | 2024-02-26 A | 2024-03-18 → 2024-03-27 A (+9d) | 2d → 1.25d | 0% → 100% | 4d → none |  | resources Mercurio → David; baseline start 2024-02-26 → none; baseline finish 2024-03-18 → none |
| 52 | Redacción de Objeto | 2024-02-26 → 2024-03-18 A (+21d) | 2024-03-07 → 2024-03-18 A (+11d) | 1d → 0.5h | 0% → 100% | 5d → none |  | constraint none → start no earlier than 2024-03-18; resources Omar → Mercurio; baseline start 2024-02-26 → none; baseline finish 2024-03-07 → none |
| 53 | Redacción de Antecedentes | 2024-02-26 → 2024-03-28 A (+31d) | 2024-03-18 → 2024-04-06 A (+19d) | 2d → 1.25d | 0% → 100% | 4d → none |  | baseline start 2024-02-26 → none; baseline finish 2024-03-18 → none |
| 54 | Redacción de Descripción de la situación actual | 2024-02-26 → 2024-03-16 A (+19d) | 2024-03-18 → 2024-03-16 A (-2d) | 2d → 0.5h | 0% → 100% | 4d → none |  | constraint none → start no earlier than 2024-03-16; resources David → Omar; baseline start 2024-02-26 → none; baseline finish 2024-03-18 → none |
| 55 | **Redacción de Normas y referencias** | 2024-02-26 → 2024-03-18 A (+21d) | 2024-04-09 → 2024-05-06 (+27d) | 4d? → 37.09d | 0% → 67% | 2d → 7d |  | baseline start 2024-02-26 → none; baseline finish 2024-04-09 → none |
| 56 | **Redacción de Disposiciones legales y normas aplicadas** | 2024-02-26 → 2024-03-18 A (+21d) | 2024-03-18 → 2024-04-23 A (+36d) | 2d? → 28.01d | 0% → 100% | 4d → none |  | baseline start 2024-02-26 → none; baseline finish 2024-03-18 → none |
| 57 | Recopilación del conjunto de disposiciones y normas aplicables al proyecto | 2024-02-26 → 2024-03-18 A (+21d) | 2024-03-07 → 2024-03-28 A (+21d) | 1d? → 1.25d | 0% → 100% | 4d → none |  | resources Mercurio → David; baseline start 2024-02-26 → none; baseline finish 2024-03-07 → none |
| 58 | Inclusión de las normas en el documento | 2024-03-07 → 2024-03-29 A (+22d) | 2024-03-18 → 2024-04-23 A (+36d) | 1d? → 1.25d | 0% → 100% | 4d → none |  | baseline start 2024-03-07 → none; baseline finish 2024-03-18 → none |
| 59 | Redacción de Bibliografía | 2024-02-26 → 2024-04-19 (+53d) | 2024-04-09 → 2024-05-06 (+27d) | 4d → 1.25d |  | 2d → 5.88d |  | constraint none → start no earlier than 2024-04-19; baseline start 2024-02-26 → none; baseline finish 2024-04-09 → none |
| 60 | **Redacción de Definiciones y abreviaturas** | 2024-02-26 → 2024-05-16 (+80d) | 2024-03-18 → 2024-05-16 (+59d) | 2d? → 0.12d |  | 4d → 0d |  | baseline start 2024-02-26 → none; baseline finish 2024-03-18 → none |
| 61 | Recopilación de las definiciones y abreviaturas utilizadas en el proyecto | 2024-02-26 → 2024-05-16 (+80d) | 2024-03-07 → 2024-05-16 (+70d) | 1d? → 0.06d |  | 4d → 0d | none → 50, 51, 52, 53, 54, 55, 63, 64, 67, 70, 74, 75, 79, 81, 85, 86, 87, 119, 120, 121 | baseline start 2024-02-26 → none; baseline finish 2024-03-07 → none |
| 62 | Documentación de las definiciones y abrevieturas | 2024-03-07 → 2024-05-16 (+70d) | 2024-03-18 → 2024-05-16 (+59d) | 1d? → 0.06d |  | 4d → 0d |  | baseline start 2024-03-07 → none; baseline finish 2024-03-18 → none |
| 63 | Identificación y redacción de los requisitos iniciales | 2024-02-26 → 2024-03-29 A (+32d) | 2024-04-30 → 2024-04-15 A (-15d) | 6d → 1.25d | 0% → 100% | 0d → none |  | constraint none → start no earlier than 2024-03-29; resources Omar → Pablo; baseline start 2024-02-26 → none; baseline finish 2024-04-30 → none |
| 64 | **Redacción de Alcance** | 2024-02-26 → 2024-03-07 A (+10d) | 2024-03-18 → 2024-04-07 A (+20d) | 2d? → 24.12d | 0% → 100% | 4d → none |  | baseline start 2024-02-26 → none; baseline finish 2024-03-18 → none |
| 65 | Enumeración y contenido de todos los entregables del proyecto | 2024-02-26 → 2024-04-02 A (+36d) | 2024-03-07 → 2024-04-07 A (+31d) | 1d? → 0.49d | 0% → 100% | 4d → none |  | constraint none → start no earlier than 2024-04-02; resources Pablo → Omar; baseline start 2024-02-26 → none; baseline finish 2024-03-07 → none |
| 66 | Documentación del alcance | 2024-03-07 A | 2024-03-18 → 2024-03-25 A (+7d) | 1d? → 1.25d | 0% → 100% | 4d → none |  | baseline start 2024-03-07 → none; baseline finish 2024-03-18 → none |
| 67 | **Redacción de Hipótesis y restricciones** | 2024-02-26 → 2024-03-11 A (+14d) | 2024-03-18 → 2024-05-01 A (+44d) | 2d? → 40.09d | 0% → 100% | 4d → none |  | baseline start 2024-02-26 → none; baseline finish 2024-03-18 → none |
| 68 | Identificación de las hipotesís y las restricciones | 2024-02-26 → 2024-03-11 A (+14d) | 2024-03-07 → 2024-04-21 A (+45d) | 1d? → 1.25d | 0% → 100% | 4d → none |  | resources Mercurio → David; baseline start 2024-02-26 → none; baseline finish 2024-03-07 → none |
| 69 | Documentación de las hipótesis y restricciones | 2024-03-07 → 2024-04-22 A (+46d) | 2024-03-18 → 2024-05-01 A (+44d) | 1d? → 1.25d | 0% → 100% | 4d → none |  | resources Omar → Pablo; baseline start 2024-03-07 → none; baseline finish 2024-03-18 → none |
| 70 | **Redacción de Estudio de alternativas y viabilidad** | 2024-02-26 → 2024-04-01 A (+35d) | 2024-03-28 → 2024-04-07 A (+10d) | 3d? → 6.25d | 0% → 100% | 3d → none |  | baseline start 2024-02-26 → none; baseline finish 2024-03-28 → none |
| 71 | Realización de estudios de alternativas | 2024-02-26 → 2024-04-01 A (+35d) | 2024-03-07 → 2024-04-05 A (+29d) | 1d? → 0.55d | 0% → 100% | 3d → none |  | constraint none → start no earlier than 2024-04-05; resources Pablo → Omar; baseline start 2024-02-26 → none; baseline finish 2024-03-07 → none |
| 72 | Evaluación de la viabilidad de las alternativas | 2024-03-07 → 2024-04-06 A (+30d) | 2024-03-18 → 2024-04-06 A (+19d) | 1d? → 0.12d | 0% → 100% | 3d → none |  | constraint none → start no earlier than 2024-04-06; baseline start 2024-03-07 → none; baseline finish 2024-03-18 → none |
| 73 | Documentación de los resultados del estudio y la viabilidad | 2024-03-18 → 2024-04-07 A (+20d) | 2024-03-28 → 2024-04-07 A (+10d) | 1d? → 1h | 0% → 100% | 3d → none |  | constraint none → start no earlier than 2024-04-07; resources Mercurio → David; baseline start 2024-03-18 → none; baseline finish 2024-03-28 → none |
| 74 | Descripción de la solución propuesta y sus características | 2024-02-26 A | 2024-03-07 → 2024-03-11 A (+4d) | 1d? → 1.25d | 0% → 100% | 5d → none |  | resources Omar → Pablo; baseline start 2024-02-26 → none; baseline finish 2024-03-07 → none |
| 75 | **Redacción de Análisis de Riesgos** | 2024-02-26 → 2024-03-26 A (+29d) | 2024-03-28 → 2024-04-28 (+31d) | 3d? → 26d | 0% → 95% | 3d → 4.25d |  | baseline start 2024-02-26 → none; baseline finish 2024-03-28 → none |
| 76 | Identificación de riesgos | 2024-02-26 → 2024-03-26 A (+29d) | 2024-03-07 → 2024-04-08 A (+32d) | 1d? → 7d | 0% → 100% | 3d → none |  | resources Pablo → Omar; baseline start 2024-02-26 → none; baseline finish 2024-03-07 → none |
| 77 | Evaluación de impacto y acciones de mitigación | 2024-03-07 → 2024-04-09 A (+33d) | 2024-03-18 → 2024-04-11 A (+24d) | 1d? → 0.33d | 0% → 100% | 3d → none |  | constraint none → start no earlier than 2024-04-09; baseline start 2024-03-07 → none; baseline finish 2024-03-18 → none |
| 78 | Documentación y descripción de las conclusiones obtenidas | 2024-03-18 → 2024-04-12 (+25d) | 2024-03-28 → 2024-04-28 (+31d) | 1d? → 3h |  |  |  | constraint none → start no earlier than 2024-04-12; resources Mercurio → Omar; baseline start 2024-03-18 → none; baseline finish 2024-03-28 → none |
| 79 | **Redacción de Organización y gestión del proyecto** | 2024-02-26 → 2024-03-14 (+17d) | 2024-03-07 → 2024-03-14 (+7d) | 1d? → 0.12d |  | 5d → 39d |  | baseline start 2024-02-26 → none; baseline finish 2024-03-07 → none |
| 80 | Creación de cronogramas incluyendo entregas parciales, hitos intermedios y duración del proyecto | 2024-02-26 → 2024-03-14 (+17d) | 2024-03-07 → 2024-03-14 (+7d) | 1d? → 0.12d |  | 5d → 39d | none → 83 | resources Omar → Pablo; baseline start 2024-02-26 → none; baseline finish 2024-03-07 → none |
| 81 | **Redacción de Planificación temporal** | 2024-02-26 → 2024-03-12 A (+15d) | 2024-03-07 → 2024-03-27 A (+20d) | 1d? → 12.25d | 0% → 100% | 5d → none |  | was named Redacción de Gestión de riesgos; baseline start 2024-02-26 → none; baseline finish 2024-03-07 → none |
| 82 | Redacción de WBS | 2024-02-26 → 2024-03-12 A (+15d) | 2024-03-07 → 2024-03-12 A (+5d) | 1d? → 1d | 0% → 100% | 5d → none |  | resources Pablo → Mercurio; baseline start 2024-02-26 → none; baseline finish 2024-03-07 → none |
| 83 | Establecimiento de las relaciones de precedencia | 2024-02-26 → 2024-03-13 A (+16d) | 2024-03-07 → 2024-03-13 A (+6d) | 1d? → 0.12d | 0% → 100% | 4d → none | none → 82 | baseline start 2024-02-26 → none; baseline finish 2024-03-07 → none |

| ID | Task | Start | Finish | Duration | Complete | Total float | Predecessors | Other |
| --- | --- | --- | --- | --- | --- | --- | --- | --- |
| 84 | Estimación de esfuerzos y recursos necesarios | 2024-03-07 → 2024-03-18 A (+11d) | 2024-03-18 → 2024-03-27 A (+9d) | 1d? → 1.25d | 0% → 100% | 4d → none | 83 → 83, 95 | baseline start 2024-03-07 → none; baseline finish 2024-03-18 → none |
| 85 | Redacción de Resumen del Presupuesto | 2024-02-26 → 2024-04-07 (+41d) | 2024-03-07 → 2024-04-16 (+40d) | 1d? → 1.25d |  | 5d → 21d | none → 120 | resources Omar → Pablo; baseline start 2024-02-26 → none; baseline finish 2024-03-07 → none |
| 86 | Redacción de Orden de prioridad de los documentos básicos del proyecto. | 2024-02-26 → 2024-04-04 A (+38d) | 2024-03-07 → 2024-04-09 A (+33d) | 1d? → 0.37d | 0% → 100% | 5d → none |  | constraint none → start no earlier than 2024-04-05; resources Pablo → Omar; baseline start 2024-02-26 → none; baseline finish 2024-03-07 → none |
| 87 | **Redacción de Anexos** | 2024-02-26 A | 2024-03-18 → 2024-05-15 (+58d) | 2d? → 60.03d | 0% → 75% | 4d → 0d |  | baseline start 2024-02-26 → none; baseline finish 2024-03-18 → none |
| 88 | **Redacción de Documentación de entrada** | 2024-02-26 → 2024-03-26 A (+29d) | 2024-03-18 → 2024-04-08 (+21d) | 2d? → 11.25d | 0% → 96% | 4d → 27d |  | baseline start 2024-02-26 → none; baseline finish 2024-03-18 → none |
| 89 | Recopilación y organización de documentos adicionales relevantes | 2024-02-26 → 2024-03-26 A (+29d) | 2024-03-07 → 2024-04-08 A (+32d) | 1d? → 1.44d | 0% → 100% | 4d → none |  | constraint none → finish no earlier than 2024-04-07; baseline start 2024-02-26 → none; baseline finish 2024-03-07 → none |
| 90 | Revisión y actualización de los anexos según sea necesario | 2024-03-07 → 2024-04-08 (+32d) | 2024-03-18 → 2024-04-08 (+21d) | 1d? → 0.06d |  | 4d → 27d |  | resources Mercurio → Pablo; baseline start 2024-03-07 → none; baseline finish 2024-03-18 → none |
| 91 | **Redacción de Análisis y Diseño del sistema** | 2024-02-26 → 2024-04-07 A (+41d) | 2024-03-07 → 2024-05-15 (+69d) | 1d? → 28.12d | 0% → 53% | 5d → 0d |  | baseline start 2024-02-26 → none; baseline finish 2024-03-07 → none |
| 92 | Realización de análisis detallado de los requerimientos del sistema | 2024-02-26 → 2024-04-07 A (+41d) | 2024-03-07 → 2024-04-22 A (+46d) | 1d? → 1.5d | 0% → 100% | 5d → none |  | constraint none → start no earlier than 2024-04-07; resources Omar → Pablo; baseline start 2024-02-26 → none; baseline finish 2024-03-07 → none |
| 93 | Diseño de la arquitectura y componentes del sistema | 2024-02-26 → 2024-04-10 A (+44d) | 2024-03-07 → 2024-04-27 (+51d) | 1d? → 1.25d | 0% → 50% | 5d → 0d | none → 92, 82 | constraint none → start no earlier than 2024-04-10; resources Pablo → Omar; baseline start 2024-02-26 → none; baseline finish 2024-03-07 → none |
| 94 | Revisión y validación del análisis y diseño del sistema | 2024-02-26 → 2024-05-06 (+70d) | 2024-03-07 → 2024-05-15 (+69d) | 1d? → 1.25d |  | 5d → 0d | none → 93 | baseline start 2024-02-26 → none; baseline finish 2024-03-07 → none |
| 95 | **Redacción de Estimación de tamaño y esfuerzos** | 2024-02-26 → 2024-03-05 A (+8d) | 2024-03-07 → 2024-04-10 (+34d) | 1d? → 29.17d | 0% → 82% | 5d → 17.08d |  | baseline start 2024-02-26 → none; baseline finish 2024-03-07 → none |
| 107 | **Redacción de Planes de gestion del proyecto** | 2024-02-26 A | 2024-03-07 → 2024-05-07 (+61d) | 1d? → 54.03d | 0% → 53% | 5d → 6d |  | baseline start 2024-02-26 → none; baseline finish 2024-03-07 → none |
| 111 | Redacción de Gestión de costes | 2024-02-26 → 2024-05-06 (+70d) | 2024-03-07 → 2024-05-07 (+61d) | 1d? → 0.25d |  | 5d → -2d |  | was named Determinación del tamaño del proyecto en términos de líneas de código y funcionalidades; constraint none → start no earlier than 2024-05-06; resources Mercurio → Pablo; baseline start 2024-02-26 → none; baseline finish 2024-03-07 → none |
| 112 | Redacción de Gestión de la calidad | 2024-02-26 → 2024-03-07 (+10d) | 2024-03-07 → 2024-03-10 (+3d) | 1d? → 0.25d |  | 5d → 49.88d |  | was named Seguimiento y control de las interfaces entre diferentes componentes del proyecto; baseline start 2024-02-26 → none; baseline finish 2024-03-07 → none |
| 113 | Redacción de Gestion de recursos humanos | 2024-02-26 → 2024-03-16 A (+19d) | 2024-03-07 → 2024-03-18 A (+11d) | 1d? → 0.25d | 0% → 100% | 5d → none |  | was named Planificación y programación de actividades del proyecto; resources Mercurio → David; baseline start 2024-02-26 → none; baseline finish 2024-03-07 → none |
| 114 | Redacción de Gestión de comunicaciones | 2024-02-26 → 2024-02-28 (+2d) | 2024-03-07 → 2024-03-01 (-6d) | 1d? → 0.25d |  | 5d → 56.06d |  | was named Control del presupuesto asignado al proyecto; baseline start 2024-02-26 → none; baseline finish 2024-03-07 → none |
| 115 | Redacción de Gestión de riesgos | 2024-02-26 → 2024-04-05 A (+39d) | 2024-03-07 → 2024-04-06 A (+30d) | 1d? → 0.25d | 0% → 100% | 5d → none |  | was named Realización de auditorías de calidad y acciones correctivas según sea necesario; constraint none → start no earlier than 2024-04-05; resources Mercurio → Pablo; baseline start 2024-02-26 → none; baseline finish 2024-03-07 → none |
| 116 | Redacción de Gestión de adquisiciones | 2024-02-26 → 2024-04-06 A (+40d) | 2024-03-07 → 2024-04-09 A (+33d) | 1d? → 0.25d | 0% → 100% | 5d → none |  | was named Desarrollo de planes de comunicación para el proyecto; constraint none → start no earlier than 2024-04-06; resources Mercurio → Omar; baseline start 2024-02-26 → none; baseline finish 2024-03-07 → none |
| 117 | Redacción de Plan de seguridad | 2024-02-26 → 2024-04-05 A (+39d) | 2024-03-07 → 2024-04-06 A (+30d) | 1d? → 0.25d | 0% → 100% | 5d → none |  | was named Desarrollo de estrategias de mitigación y contingencia; constraint none → start no earlier than 2024-04-05; resources Mercurio → David; baseline start 2024-02-26 → none; baseline finish 2024-03-07 → none |
| 118 | Redacción de Otros anexos | 2024-02-26 → 2024-04-05 A (+39d) | 2024-03-07 → 2024-04-14 A (+38d) | 1d? → 1.25d | 0% → 100% | 5d → none | none → 88, 91, 95, 107, 117 | resources David → Omar; baseline start 2024-02-26 → none; baseline finish 2024-03-07 → none |
| 119 | Redacción de Especificaciones de los requisitos del producto | 2024-02-26 A | 2024-03-07 → 2024-03-27 A (+20d) | 1d? → 1.25d | 0% → 100% | 5d → none |  | resources Mercurio → David; baseline start 2024-02-26 → none; baseline finish 2024-03-07 → none |
| 120 | Redacción de Presupuesto | 2024-02-26 → 2024-04-06 (+40d) | 2024-03-07 → 2024-04-06 (+30d) | 1d? → 2h |  | 5d → none | none → 75, 81, 79, 95, 111, 113, 116 | resources Omar → Mercurio; baseline start 2024-02-26 → none; baseline finish 2024-03-07 → none |
| 121 | **Redacción de Estudios con entidad propia** | 2024-02-26 → 2024-02-29 A (+3d) | 2024-03-07 → 2024-04-10 (+34d) | 1d? → 32.06d | 0% → 80% | 5d → 25d |  | was named Implementación de controles de seguridad para proteger la información y los recursos del proyecto; resources Pablo → none; baseline start 2024-02-26 → none; baseline finish 2024-03-07 → none |

## Version 3 (saved 2024-04-16, file DPPI24_E11-3_V07.mpp)

Note of the change: 22/09/2024 Subida de archivos

Last finish 2024-05-16 → 2024-04-22 (-24d). Complete tasks 57 → 64.

Removed: 78 Documentación y descripción de las conclusiones obtenidas

Changed:

| ID | Task | Start | Finish | Duration | Complete | Total float | Other |
| --- | --- | --- | --- | --- | --- | --- | --- |
| 1 | **Hitos** |  | 2024-05-16 → 2024-04-22 (-24d) | 59.25d → 13.68d |  |  |  |
| 2 | **Memoria** |  | 2024-05-16 → 2024-04-22 (-24d) | 59.25d → 13.68d |  |  |  |
| 8 | Normas y referencias | 2024-05-06 → 2024-04-19 (-17d) | 2024-05-06 → 2024-04-19 (-17d) |  |  | 8d → 0.68d |  |
| 9 | Definiciones y abreviaturas | 2024-05-16 → 2024-04-22 (-24d) | 2024-05-16 → 2024-04-22 (-24d) |  |  |  |  |
| 10 | Requisitos iniciales | 2024-04-15 → 2024-04-01 (-14d) | 2024-04-15 → 2024-04-01 (-14d) |  |  | 23d → 5.28d |  |
| 12 | Hipótesis y restricciones | 2024-05-01 → 2024-04-08 (-23d) | 2024-05-01 → 2024-04-08 (-23d) |  |  | 11d → 3.59d |  |
| 15 | Análisis de riesgos | 2024-04-28 → 2024-04-11 (-17d) | 2024-04-28 → 2024-04-11 (-17d) |  |  | 13.25d → 2.85d |  |
| 16 | Organización y gestión del proyecto | 2024-03-14 → 2024-04-14 (+31d) | 2024-03-14 → 2024-04-14 (+31d) |  |  | 48d → 1.93d |  |
| 17 | **Planificación temporal** |  |  | 11.25d → 3.62d |  | 38d → 6.55d |  |
| 20 | Resumen del presupuesto | 2024-04-16 → 2024-04-11 (-5d) | 2024-04-16 → 2024-04-11 (-5d) |  |  | 22d → 2.67d |  |
| 22 | **Anexos** | 2024-03-01 A → 2024-02-28 A (-2d) | 2024-05-15 → 2024-04-22 (-23d) | 56.06d → 13.33d |  | 1d → 0.12d |  |
| 24 | Análisis y Diseño del sistema | 2024-05-15 → 2024-04-22 (-23d) | 2024-05-15 → 2024-04-22 (-23d) |  |  | 1d → 0.12d |  |
| 26 | **Planes de gesión del proyecto** | 2024-03-01 → 2024-02-28 (-2d) | 2024-05-07 → 2024-04-12 (-25d) | 50.06d → 11.03d |  | 7d → 2.42d |  |
| 29 | Gestión de plazos | 2024-03-02 → 2024-02-28 (-3d) | 2024-03-02 → 2024-02-28 (-3d) |  |  | 56.25d → 13.46d |  |
| 30 | Gestión de costes | 2024-05-07 → 2024-04-12 (-25d) | 2024-05-07 → 2024-04-12 (-25d) |  |  | 7d → 2.42d |  |
| 31 | Gestion de la calidad | 2024-03-10 → 2024-03-08 (-2d) | 2024-03-10 → 2024-03-08 (-2d) |  |  | 51.25d → 11.18d |  |
| 33 | Gestión de comunicaciones | 2024-03-01 → 2024-02-29 (-1d) | 2024-03-01 → 2024-02-29 (-1d) |  |  | 57.06d → 13.36d |  |
| 41 | **Tareas a realizar para el proyecto de laboratorio de DPPI** |  | 2024-05-16 → 2024-04-22 (-24d) | 61.25d → 14.18d | 83% → 86% |  |  |
| 43 | **Creación de una Wiki** |  |  | 24.25d → 7.88d |  |  |  |
| 45 | **Poner más páginas e información en la wiki** |  |  | 17.25d → 5.62d |  |  |  |
| 48 | Creación de plantilla de word |  |  | 1.12d → 0.25d |  |  |  |
| 49 | **Redacción de la Memoria** |  | 2024-05-16 → 2024-04-22 (-24d) | 61.09d → 14.14d | 88% → 87% |  |  |
| 50 | Redacción de Hojas de identificación |  |  | 1d → 1.25d |  |  |  |
| 55 | **Redacción de Normas y referencias** |  | 2024-05-06 → 2024-04-19 (-17d) | 37.09d → 8.22d |  | 7d → 0.55d |  |
| 56 | **Redacción de Disposiciones legales y normas aplicadas** |  | 2024-04-23 A → 2024-04-03 A (-20d) | 28.01d → 4.22d |  |  |  |
| 58 | Inclusión de las normas en el documento |  | 2024-04-23 A → 2024-04-03 A (-20d) |  |  |  |  |
| 59 | Redacción de Bibliografía | 2024-04-19 → 2024-04-11 (-8d) | 2024-05-06 → 2024-04-19 (-17d) |  |  | 5.88d → 0.55d | constraint start no earlier than 2024-04-19 → start no earlier than 2024-04-11 |
| 60 | **Redacción de Definiciones y abreviaturas** | 2024-05-16 → 2024-04-22 (-24d) | 2024-05-16 → 2024-04-22 (-24d) |  |  |  |  |
| 61 | Recopilación de las definiciones y abreviaturas utilizadas en el proyecto | 2024-05-16 → 2024-04-22 (-24d) | 2024-05-16 → 2024-04-22 (-24d) |  |  |  |  |
| 62 | Documentación de las definiciones y abrevieturas | 2024-05-16 → 2024-04-22 (-24d) | 2024-05-16 → 2024-04-22 (-24d) |  |  |  |  |
| 63 | Identificación y redacción de los requisitos iniciales |  | 2024-04-15 A → 2024-04-01 A (-14d) | 1.25d → 0.65d |  |  |  |
| 64 | **Redacción de Alcance** |  |  | 24.12d → 7.87d |  |  |  |
| 67 | **Redacción de Hipótesis y restricciones** |  | 2024-05-01 A → 2024-04-08 A (-23d) | 40.09d → 7.06d |  |  |  |
| 68 | Identificación de las hipotesís y las restricciones |  | 2024-04-21 A → 2024-03-18 A (-34d) |  |  |  |  |
| 69 | Documentación de las hipótesis y restricciones | 2024-04-22 A → 2024-04-05 A (-17d) | 2024-05-01 A → 2024-04-08 A (-23d) | 1.25d → 0.46d |  |  |  |
| 70 | **Redacción de Estudio de alternativas y viabilidad** |  |  | 6.25d → 1.62d |  |  |  |
| 75 | **Redacción de Análisis de Riesgos** |  | 2024-04-28 → 2024-04-11 A (-17d) | 26d → 4.08d | 95% → 100% | 4.25d → none |  |
| 76 | Identificación de riesgos |  |  | 7d → 2d |  |  |  |
| 78 | **Redacción de Organización y gestión del proyecto** | 2024-03-14 → 2024-04-12 A (+29d) | 2024-03-14 → 2024-04-14 A (+31d) | 0.12d → 0.75d | 0% → 100% | 39d → none |  |
| 79 | Creación de cronogramas incluyendo entregas parciales, hitos intermedios y duración del proyecto | 2024-03-14 → 2024-04-12 A (+29d) | 2024-03-14 → 2024-04-14 A (+31d) | 0.12d → 0.75d | 0% → 100% | 39d → none | constraint none → start no earlier than 2024-04-12 |
| 80 | **Redacción de Planificación temporal** |  |  | 12.25d → 3.88d |  |  |  |
| 81 | Redacción de WBS |  |  | 1d → 1.25d |  |  |  |
| 84 | Redacción de Resumen del Presupuesto |  | 2024-04-16 → 2024-04-11 (-5d) |  |  | 21d → 2.55d |  |
| 86 | **Redacción de Anexos** |  | 2024-05-15 → 2024-04-22 (-23d) | 60.03d → 13.96d | 75% → 85% |  |  |
| 87 | **Redacción de Documentación de entrada** |  | 2024-04-08 A | 11.25d → 3.31d | 96% → 100% | 27d → none |  |
| 88 | Recopilación y organización de documentos adicionales relevantes |  | 2024-04-08 A → 2024-04-07 A (-1d) | 1.44d → 0.49d |  |  |  |
| 89 | Revisión y actualización de los anexos según sea necesario | 2024-04-08 A | 2024-04-08 A |  | 0% → 100% | 27d → none |  |
| 90 | **Redacción de Análisis y Diseño del sistema** |  | 2024-05-15 → 2024-04-22 (-23d) | 28.12d → 3.8d | 53% → 59% |  |  |
| 91 | Realización de análisis detallado de los requerimientos del sistema |  | 2024-04-22 A → 2024-04-10 A (-12d) | 1.5d → 0.55d |  |  |  |
| 92 | Diseño de la arquitectura y componentes del sistema |  | 2024-04-27 → 2024-04-17 A (-10d) |  | 50% → 100% | 0d → none |  |
| 93 | Revisión y validación del análisis y diseño del sistema | 2024-05-06 → 2024-04-17 (-19d) | 2024-05-15 → 2024-04-22 (-23d) |  |  |  | constraint none → start no earlier than 2024-04-17 |
| 94 | **Redacción de Estimación de tamaño y esfuerzos** |  | 2024-04-10 A | 29.17d → 9.05d | 82% → 100% | 17.08d → none |  |
| 95 | **Estimación de los modulos** |  |  | 4d → 1.12d |  |  |  |
| 96 | Estimación modulo 1 |  |  | 1.12d → 0.25d |  |  |  |
| 98 | Estimación modulo 3 |  |  | 1.12d → 0.25d |  |  |  |
| 99 | Estimación modulo 4 |  |  | 1.12d → 0.25d |  |  |  |
| 102 | Estimación modulo 7 |  |  | 1.12d → 0.25d |  |  |  |
| 103 | Calculo general de las estimaciones | 2024-03-10 A | 2024-03-19 A |  | 0% → 100% | 35d → none |  |
| 104 | Inclusión de la explicación de los PF |  |  | 1d → 0.12d |  |  |  |
| 105 | Inclusión de la estimación de esfuerzos de los módulos |  | 2024-04-06 → 2024-04-08 A (+2d) |  | 73% → 100% | 20.5d → none |  |
| 106 | **Redacción de Planes de gestion del proyecto** |  | 2024-05-07 → 2024-04-12 (-25d) | 54.03d → 11.66d | 53% → 76% | 6d → 2.3d |  |
| 109 | Redacción de Gestión de plazos | 2024-02-26 A | 2024-03-02 → 2024-02-28 A (-3d) |  | 0% → 100% | 55.25d → none |  |
| 110 | Redacción de Gestión de costes | 2024-05-06 → 2024-04-12 (-24d) | 2024-05-07 → 2024-04-12 (-25d) |  |  | -2d → 0.8d | constraint start no earlier than 2024-05-06 → start no earlier than 2024-04-12 |
| 111 | Redacción de Gestión de la calidad | 2024-03-07 A | 2024-03-10 → 2024-03-08 A (-2d) |  | 0% → 100% | 49.88d → none |  |
| 113 | Redacción de Gestión de comunicaciones |  | 2024-03-01 → 2024-02-29 (-1d) |  |  | 56.06d → 13.24d |  |
| 120 | **Redacción de Estudios con entidad propia** |  |  | 32.06d → 10.31d |  | 25d → 2.92d |  |
| 124 | Impacto ambiental |  | 2024-03-02 → 2024-03-01 (-1d) |  |  | 55.25d → 12.99d |  |
